# Diagrama de Gantt Act2

Schedule from MS Project, 2020-01-20 to 2020-08-11, costs in $, A marks actual dates.

## Calendars

- Estándar: Mon-Fri 09:00-13:00, 15:00-19:00; Sat-Sun off.

## Resources

| Resource | Unit | Rate | Cost per use |
| --- | --- | --- | --- |
| Usuario Final |  |  |  |
| Líder de proyecto |  | 191.96 |  |
| Analista |  | 149.91 |  |
| Programador |  | 133.93 |  |
| Pruebas de interface |  | 111.61 |  |
| Documentador |  | 111.61 |  |
| Diseñador BD |  | 111.61 |  |
| Tester |  | 135.04 |  |
| Computadoras | Equipos por día |  | 200 |
| Luz electrica | Horas de uso |  | 13.33 |
| Agua | Dia de uso |  | 6.3 |
| internet | dia de uso |  | 16.63 |
| Papeleria | día de uso |  | 100 |
| Tinta | día de uso |  | 25 |
| Impresora | día de uso |  | 65 |
| Diseñador Grafico |  | 133.93 |  |
| Psicólogo |  | 178.57 |  |
| SQA |  | 200.89 |  |
| Gerente de proyecto |  | 213.76 |  |
| Todos |  |  |  |

## Schedule

| ID | WBS | Task | Duration | Start | Finish | Predecessors | Complete | Remaining | Actual start | Total slack | Constraint | Resources | Work | Actual work | Cost | Actual cost |
| --- | --- | --- | --- | --- | --- | --- | --- | --- | --- | --- | --- | --- | --- | --- | --- | --- |
| 1 | 1 | **Sistema Gestor de una base de datos distribuida IECA** | 64d | 2020-05-14 | 2020-08-11 |  | 99% | 0.15d | 2020-01-20 |  |  |  | 1876h | 1869.2h | 271,377.34 | 270,403.61 |
| 2 | 1.1 | **Definición de requerimientos** | 11d | 2020-05-14 | 2020-05-28 |  | 99% | 0.13d | 2020-01-20 |  |  |  | 324h | 318h | 46,482.97 | 45,671.53 |
| 3 | 1.1.1 | Acta de inicio | 1d | 2020-05-14 A | 2020-05-14 A |  | 100% |  |  |  |  | Líder de proyecto; Impresora [1 día de uso]; Tinta [1 día de uso]; Gerente de proyecto | 8h | 8h | 1,625.68 | 1,625.68 |
| 4 | 1.1.2 | Minuta de arranque | 1d | 2020-05-14 A | 2020-05-14 A |  | 100% |  |  |  |  | Todos; Líder de proyecto; Analista; Diseñador BD; Diseñador Grafico; Documentador; Gerente de proyecto; Programador; Tester | 72h | 72h | 9,454 | 9,454 |
| 5 | 1.1.3 | Análisis del problema | 2d | 2020-05-15 A | 2020-05-18 A | 4 | 100% |  |  |  |  | Analista [33.3%]; Computadoras [4 Equipos por día]; Líder de proyecto [33.3%]; Documentador [33.3%]; Gerente de proyecto | 16h | 16h | 2,618.56 | 2,618.56 |
| 6 | 1.1.4 | Entrevista | 2d | 2020-05-19 A | 2020-05-20 A | 5 | 100% |  |  |  |  | Analista | 16h | 16h | 2,398.56 | 2,398.56 |
| 7 | 1.1.5 | Recopilar información | 2d | 2020-01-20 A | 2020-05-21 A | 6 | 100% |  |  |  |  | Líder de proyecto; Analista; Impresora [1 día de uso]; Papeleria [2 día de uso]; Tinta [2 día de uso] | 24h | 24h | 4,460.64 | 4,460.64 |
| 8 | 1.1.6 | Identificación de requerimientos | 3d | 2020-05-19 A | 2020-05-21 A | 5 | 100% |  |  |  |  | Analista; Computadoras [1 Equipos por día]; internet [1 dia de uso]; Luz electrica [1 Horas de uso] | 24h | 24h | 3,827.8 | 3,827.8 |
| 9 | 1.1.7 | Identificación de restricciones de la base de datos a desarrollar | 3d | 2020-05-19 A | 2020-05-21 A | 5 | 100% |  |  |  |  | Diseñador BD; Programador | 48h | 48h | 5,892.96 | 5,892.96 |
| 10 | 1.1.8 | Análisis de los requerimientos | 2d | 2020-05-20 A | 2020-05-21 A | 8 | 100% |  |  |  |  | Analista; Documentador | 32h | 32h | 4,184.32 | 4,184.32 |
| 11 | 1.1.9 | Representación de los requerimientos | 2d | 2020-05-25 A | 2020-05-26 A |  | 100% |  |  |  | start no earlier than 2020-05-25 | Analista; Documentador | 32h | 32h | 4,184.32 | 4,184.32 |
| 12 | 1.1.10 | Validación de requerimientos | 1d | 2020-05-26 A | 2020-05-26 A |  | 100% |  |  |  | start no earlier than 2020-05-26 | Líder de proyecto; Analista | 16h | 16h | 2,734.96 | 2,734.96 |
| 13 | 1.1.11 | Generación del SRS | 1d | 2020-05-27 A | 2020-05-27 A | 12, 11 | 100% |  |  |  |  | Diseñador Grafico; Líder de proyecto | 16h | 16h | 2,607.12 | 2,607.12 |
| 14 | 1.1.12 | Firma del SRS | 1d | 2020-05-28 A | 2020-05-28 | 13 | 75% | 0.25d |  | 53d |  | Usuario Final; Líder de proyecto; Impresora [1 día de uso]; Luz electrica [1 Horas de uso]; Tinta [1 día de uso]; Gerente de proyecto | 20h | 14h | 2,494.05 | 1,682.61 |
| 15 | 1.2 | **Diseño funcional** | 7d | 2020-05-29 A | 2020-06-08 A |  | 100% |  |  |  |  |  | 184h | 184h | 28,959.84 | 28,959.84 |
| 16 | 1.2.1 | Definir el ciclo de vida | 1d | 2020-05-29 A | 2020-05-29 A | 14 | 100% |  |  |  |  | Analista; Líder de proyecto; Computadoras [1 Equipos por día]; Documentador | 24h | 24h | 3,827.84 | 3,827.84 |
| 17 | 1.2.2 | Definir las tablas del producto | 3d | 2020-06-01 A | 2020-06-03 A | 11, 16 | 100% |  |  |  |  | Líder de proyecto; Computadoras [1 Equipos por día]; Diseñador BD | 48h | 48h | 7,485.68 | 7,485.68 |
| 18 | 1.2.3 | Definir objetivo general | 2d | 2020-06-03 A | 2020-06-05 A | 11, 17 | 100% |  |  |  |  | Analista; Líder de proyecto; Computadoras [1 Equipos por día]; Documentador; Gerente de proyecto | 48h | 48h | 7,455.68 | 7,455.68 |
| 19 | 1.2.4 | Definir objetivos especificos y metodologicos | 2d | 2020-06-04 A | 2020-06-05 A | 11, 17 | 100% |  |  |  |  | Analista; Líder de proyecto; Computadoras [1 Equipos por día]; Documentador | 48h | 48h | 7,455.68 | 7,455.68 |
| 20 | 1.2.5 | Definir alcance | 1d | 2020-06-05 A | 2020-06-08 A | 18, 19 | 100% |  |  |  |  | Líder de proyecto; Analista; Gerente de proyecto | 16h | 16h | 2,734.96 | 2,734.96 |
| 21 | 1.3 | **Diseño técnico** | 16d | 2020-06-04 A | 2020-06-25 |  | 99% | 0.04d |  |  |  |  | 216h | 215.2h | 28,076.8 | 27,914.51 |
| 22 | 1.3.1 | Diseño de diagramas de clases | 4d | 2020-06-04 A | 2020-06-09 A | 17 | 100% |  |  |  |  | Computadoras [1 Equipos por día]; Diseñador BD; Luz electrica [32 Horas de uso] | 32h | 32h | 3,784.85 | 3,784.85 |
| 23 | 1.3.2 | Generar el diagrama E-R | 2d | 2020-06-08 A | 2020-06-09 A | 17, 18 | 100% |  |  |  |  | Computadoras [2 Equipos por día]; Diseñador BD; Documentador; Luz electrica [16 Horas de uso] | 32h | 32h | 3,784.85 | 3,784.85 |
| 24 | 1.3.3 | Validar el diagrama E-R | 2d | 2020-06-08 A | 2020-06-09 A | 17, 18 | 100% |  |  |  |  | Computadoras [2 Equipos por día]; Diseñador BD; Documentador; Luz electrica [16 Horas de uso] | 32h | 32h | 3,784.85 | 3,784.85 |
| 25 | 1.3.4 | Transformar al diagrama relacional | 3d | 2020-06-10 A | 2020-06-12 A | 23, 24 | 100% |  |  |  |  | Computadoras [1 Equipos por día]; Diseñador BD; Luz electrica [24 Horas de uso] | 24h | 24h | 2,891.97 | 2,891.97 |
| 26 | 1.3.5 | Normalización de la base de datos | 3d | 2020-06-15 A | 2020-06-17 A | 25 | 100% |  |  |  |  | Computadoras [1 Equipos por día]; Diseñador BD; Luz electrica [16 Horas de uso] | 24h | 24h | 2,891.97 | 2,891.97 |
| 27 | 1.3.6 | Codificar la base de datos | 2d | 2020-06-18 A | 2020-06-19 A | 26 | 100% |  |  |  |  | Programador; Diseñador BD; Computadoras [2 Equipos por día]; Luz electrica [1 Horas de uso]; Agua [1 Dia de uso]; internet [1 dia de uso] | 32h | 32h | 4,164.9 | 4,164.9 |
| 28 | 1.3.7 | Validar entradas de datos | 3d | 2020-06-22 A | 2020-06-24 A | 27 | 100% |  |  |  |  | Programador; Computadoras [1 Equipos por día]; Luz electrica [24 Horas de uso] | 24h | 24h | 3,427.65 | 3,427.65 |
| 29 | 1.3.8 | Firma del SRS | 1d | 2020-06-25 A | 2020-06-25 | 28 | 95% | 0.05d |  | 33d |  | Líder de proyecto; Papeleria [1 día de uso]; Gerente de proyecto | 16h | 15.2h | 3,345.76 | 3,183.47 |

| ID | WBS | Task | Duration | Start | Finish | Predecessors | Complete | Actual start | Actual finish | Constraint | Resources | Work | Actual work | Cost | Actual cost |
| --- | --- | --- | --- | --- | --- | --- | --- | --- | --- | --- | --- | --- | --- | --- | --- |
| 30 | 1.4 | **Código** | 23d | 2020-06-24 A | 2020-07-24 |  | 100% |  | 2020-07-23 |  |  | 476h | 476h | 66,043.21 | 66,043.21 |
| 31 | 1.4.1 | Programar la tabla de Alumnos | 2d | 2020-06-24 A | 2020-06-25 A | 26 | 100% |  |  |  | Programador [50%]; Computadoras [1 Equipos por día]; Luz electrica [1 Horas de uso]; internet [1 dia de uso]; Agua [1 Dia de uso] | 8h | 8h | 1,307.7 | 1,307.7 |
| 32 | 1.4.2 | Programar la tabla de Solbeca | 3d | 2020-06-24 A | 2020-06-26 A | 26 | 100% |  |  |  | Programador [50%]; Computadoras [1 Equipos por día]; Luz electrica [12 Horas de uso]; internet [1 dia de uso] | 12h | 12h | 1,837.12 | 1,837.12 |
| 33 | 1.4.3 | Programar la tabla de Becas | 3d | 2020-06-24 A | 2020-06-26 A | 26 | 100% |  |  |  | Programador; Computadoras [1 Equipos por día]; internet [1 dia de uso]; Luz electrica [12 Horas de uso] | 24h | 24h | 3,444.28 | 3,444.28 |
| 34 | 1.4.4 | Programar la tabla de Autbec | 3d | 2020-06-24 A | 2020-06-26 A | 31, 32, 33 | 100% |  |  |  | Programador; Computadoras [1 Equipos por día]; Luz electrica [32 Horas de uso]; Agua [3 Dia de uso]; internet [3 dia de uso] | 24h | 24h | 3,450.58 | 3,450.58 |
| 35 | 1.4.5 | Pruebas unitarias | 1d | 2020-06-29 A | 2020-06-29 A | 34, 33, 32, 31 | 100% |  |  |  | Pruebas de interface; Computadoras [1 Equipos por día]; Luz electrica [8 Horas de uso]; Tester | 16h | 16h | 2,186.53 | 2,186.53 |
| 36 | 1.4.6 | Programar la tabla de Grupos | 4d | 2020-06-24 A | 2020-06-29 A | 35 | 100% |  |  |  | Programador; Computadoras [1 Equipos por día]; Luz electrica [24 Horas de uso]; internet [1.5 dia de uso] | 32h | 32h | 4,515.72 | 4,515.72 |
| 37 | 1.4.7 | Programar la tabla de Aulas | 2d | 2020-06-24 A | 2020-06-25 A | 35 | 100% |  |  |  | Programador; Computadoras [1 Equipos por día]; Luz electrica [16 Horas de uso]; internet [1 dia de uso]; Agua [1 Dia de uso] | 16h | 16h | 2,379.14 | 2,379.14 |
| 38 | 1.4.8 | Programar la tabla de Pagos | 3d | 2020-06-24 A | 2020-06-26 A | 35 | 100% |  |  |  | Computadoras [1 Equipos por día]; Programador; Luz electrica [24 Horas de uso] | 24h | 24h | 3,427.65 | 3,427.65 |
| 39 | 1.4.9 | Pruebas unitarias | 1d | 2020-06-24 A | 2020-06-24 A | 36, 37, 38 | 100% |  |  |  | Pruebas de interface; Computadoras [1 Equipos por día]; Luz electrica [8 Horas de uso]; Agua [1 Dia de uso]; Tester | 16h | 16h | 2,192.83 | 2,192.83 |
| 40 | 1.4.10 | Programar la tabla de Curos | 2d | 2020-06-24 A | 2020-06-25 A | 39 | 100% |  |  |  | Programador; Computadoras [1 Equipos por día]; Luz electrica [16 Horas de uso]; internet [1 dia de uso] | 16h | 16h | 2,372.84 | 2,372.84 |
| 41 | 1.4.11 | Programar la tabla de Telefono | 2d | 2020-06-24 A | 2020-06-25 A | 39 | 100% |  |  |  | Programador; Computadoras [1 Equipos por día]; Luz electrica [16 Horas de uso] | 16h | 16h | 2,356.21 | 2,356.21 |
| 42 | 1.4.12 | Programar la tabla de Tipotel | 2d | 2020-06-24 A | 2020-06-25 A | 39 | 100% |  |  |  | Programador; Luz electrica [16 Horas de uso]; Computadoras [1 Equipos por día] | 16h | 16h | 2,356.21 | 2,356.21 |
| 43 | 1.4.13 | Programar la tabla de Inscritos | 4d | 2020-06-24 A | 2020-06-29 A | 39 | 100% |  |  |  | Programador; Computadoras [1 Equipos por día]; Luz electrica [32 Horas de uso]; internet [3 dia de uso] | 32h | 32h | 4,515.72 | 4,515.72 |
| 44 | 1.4.14 | Pruebas unitarias | 2d | 2020-06-24 A | 2020-06-25 A | 40, 41, 42, 43 | 100% |  |  |  | Pruebas de interface; Computadoras [2 Equipos por día]; Luz electrica [16 Horas de uso]; Tester | 32h | 32h | 4,159.73 | 4,159.73 |
| 45 | 1.4.15 | Programar la tabla de Instructores | 2d | 2020-06-26 A | 2020-06-29 A | 44 | 100% |  |  |  | Programador; Computadoras [1 Equipos por día]; Luz electrica [16 Horas de uso] | 16h | 16h | 2,356.21 | 2,356.21 |
| 46 | 1.4.16 | Programar la tabla de especialidad | 1d | 2020-06-30 A | 2020-06-30 A | 44 | 100% |  |  |  | Computadoras [1 Equipos por día]; Luz electrica [8 Horas de uso]; internet [1 dia de uso]; Programador | 8h | 8h | 1,301.4 | 1,301.4 |
| 47 | 1.4.17 | Pruebas unitarias | 2d | 2020-07-01 A | 2020-07-02 A | 45, 46 | 100% |  |  |  | Pruebas de interface; Computadoras [1 Equipos por día]; Luz electrica [16 Horas de uso]; internet [2 dia de uso]; Agua [2 Dia de uso] | 16h | 16h | 2,022.02 | 2,022.02 |
| 48 | 1.4.18 | Programar la tabla de Horarios | 3d | 2020-06-30 A | 2020-07-02 A | 47 | 100% |  |  |  | Programador; Computadoras [1 Equipos por día]; Luz electrica [24 Horas de uso]; internet [3 dia de uso] | 24h | 24h | 3,444.28 | 3,444.28 |
| 49 | 1.4.19 | Programar la tabla de Tipo | 2d | 2020-07-03 A | 2020-07-06 A | 47 | 100% |  |  |  | Computadoras [1 Equipos por día]; Luz electrica [16 Horas de uso]; internet [2 dia de uso]; Programador | 16h | 16h | 2,372.84 | 2,372.84 |
| 50 | 1.4.20 | Pruebas unitarias | 2d | 2020-07-20 A | 2020-07-21 A | 48, 49 | 100% |  |  |  | Pruebas de interface; Programador; Computadoras [2 Equipos por día]; Luz electrica [8 Horas de uso]; internet [1 dia de uso]; Agua [1 Dia de uso] | 16h | 16h | 2,022.02 | 2,022.02 |
| 51 | 1.4.21 | Validación contra diseño, agregación de los usuarios y funcionalidad | 3d | 2020-07-21 A | 2020-07-23 A | 35, 39, 44, 47, 50 | 100% |  |  | start no earlier than 2020-07-21 | Diseñador BD; Programador; Diseñador Grafico; Documentador; Computadoras [4 Equipos por día]; Luz electrica [24 Horas de uso]; internet [3 dia de uso]; Agua [3 Dia de uso] | 96h | 96h | 12,022.18 | 12,022.18 |
| 52 | 1.5 | **Pruebas** | 8d | 2020-07-23 | 2020-08-03 A |  | 100% | 2020-07-24 |  |  |  | 256h | 256h | 40,121.52 | 40,121.52 |
| 53 | 1.5.1 | Subir módulos a servidor de pruebas | 1d | 2020-07-24 A | 2020-07-24 A | 51 | 100% |  |  | start no earlier than 2020-07-23 | Líder de proyecto; Programador; Documentador; SQA; Computadoras [3 Equipos por día]; Luz electrica [8 Horas de uso]; internet [1 dia de uso]; Agua [1 Dia de uso] | 32h | 32h | 5,343.38 | 5,343.38 |
| 54 | 1.5.2 | Pruebas de integración de software | 4d | 2020-07-24 A | 2020-07-29 A | 51 | 100% |  |  |  | Pruebas de interface; SQA; Programador; Computadoras [3 Equipos por día]; Luz electrica [24 Horas de uso]; Agua [1 Dia de uso]; internet [1 dia de uso]; Tester | 128h | 128h | 18,843.3 | 18,843.3 |
| 55 | 1.5.3 | Pruebas de aceptación | 3d | 2020-07-30 A | 2020-08-03 A | 54 | 100% |  |  |  | Líder de proyecto; Analista; Documentador; SQA; Computadoras [2 Equipos por día]; Luz electrica [10 Horas de uso]; internet [2 dia de uso] | 96h | 96h | 15,934.84 | 15,934.84 |

| ID | WBS | Task | Duration | Start | Finish | Predecessors | Complete | Constraint | Resources | Work | Actual work | Cost | Actual cost |
| --- | --- | --- | --- | --- | --- | --- | --- | --- | --- | --- | --- | --- | --- |
| 56 | 1.6 | **Implementación** | 6d | 2020-08-04 A | 2020-08-11 A |  | 100% |  |  | 420h | 420h | 61,693 | 61,693 |
| 57 | 1.6.1 | Subir software a sistema a servidor de pruebas | 2d | 2020-08-04 A | 2020-08-05 A | 55 | 100% |  | Líder de proyecto; Programador; Diseñador BD; SQA; Computadoras [3 Equipos por día]; Luz electrica [16 Horas de uso]; internet [1 dia de uso] | 28h | 28h | 5,087.04 | 5,087.04 |
| 58 | 1.6.2 | Pruebas de estrés | 4d | 2020-08-04 A | 2020-08-07 A | 55 | 100% | start no earlier than 2020-03-31 | Pruebas de interface; Psicólogo; Líder de proyecto; Computadoras [1 Equipos por día]; Luz electrica [32 Horas de uso]; internet [3 dia de uso] | 96h | 96h | 15,658.44 | 15,658.44 |
| 59 | 1.6.3 | Pruebas de aceptación | 5d | 2020-08-04 A | 2020-08-10 A | 55 | 100% |  | Usuario Final; Líder de proyecto; Gerente de proyecto | 120h | 120h | 16,228.8 | 16,228.8 |
| 60 | 1.6.4 | Implementar software a servidor en línea | 5d | 2020-08-04 A | 2020-08-10 A | 55 | 100% | start no earlier than 2020-03-30 | Usuario Final [80%]; Líder de proyecto [80%]; SQA [80%]; Documentador [80%]; Computadoras [2 Equipos por día]; Gerente de proyecto [80%] | 160h | 160h | 23,183.04 | 23,183.04 |
| 61 | 1.6.5 | Acta de cierre de proyecto | 1d | 2020-08-11 A | 2020-08-11 A | 60 | 100% |  | Líder de proyecto; Usuario Final | 16h | 16h | 1,535.68 | 1,535.68 |
