# Diagrama de Gantt Act2

Schedule from MS Project, 2020-01-20 to 2020-08-10, costs in $, A marks actual dates.

## Calendars

- Estándar: Mon-Fri 09:00-13:00, 15:00-19:00; Sat-Sun off.

## Resources

| Resource | Unit | Rate | Cost per use |
| --- | --- | --- | --- |
| Usuario Final |  |  |  |
| Líder de proyecto |  | 191.96 |  |
| Analista |  | 149.91 |  |
| Programador |  | 133.93 |  |
| Pruebas de interface |  | 111.61 |  |
| Documentador |  | 111.61 |  |
| Diseñador BD |  | 111.61 |  |
| Tester |  | 135.04 |  |
| Computadoras | Equipos por día |  | 200 |
| Luz electrica | Horas de uso |  | 13.33 |
| Agua | Dia de uso |  | 6.3 |
| internet | dia de uso |  | 16.63 |
| Papeleria | día de uso |  | 100 |
| Tinta | día de uso |  | 25 |
| Impresora | día de uso |  | 65 |
| Diseñador Grafico |  | 133.93 |  |
| Psicólogo |  | 178.57 |  |
| SQA |  | 200.89 |  |
| Gerente de proyecto |  | 213.76 |  |
| Todos |  |  |  |

## Schedule

| ID | WBS | Task | Duration | Start | Finish | Predecessors | Complete | Remaining | Actual start | Total slack | Free slack | Constraint | Resources | Work | Actual work | Cost | Actual cost |
| --- | --- | --- | --- | --- | --- | --- | --- | --- | --- | --- | --- | --- | --- | --- | --- | --- | --- |
| 1 | 1 | **Sistema Gestor de una base de datos distribuida IECA** | 63d | 2020-05-14 | 2020-08-10 |  | 14% | 54.49d | 2020-01-20 |  |  |  |  | 1792h | 232h | 258,499.6 | 33,835.9 |
| 2 | 1.1 | **Definición de requerimientos** | 11d | 2020-05-14 | 2020-05-28 |  | 71% | 3.14d | 2020-01-20 |  |  |  |  | 324h | 232h | 47,155.77 | 33,599.64 |
| 3 | 1.1.1 | Acta de inicio | 1d | 2020-05-14 A | 2020-05-14 A |  | 100% |  |  |  |  |  | Líder de proyecto; Impresora [1 día de uso]; Tinta [1 día de uso]; Gerente de proyecto | 8h | 8h | 1,625.68 | 1,625.68 |
| 4 | 1.1.2 | Minuta de arranque | 1d | 2020-05-14 A | 2020-05-14 A |  | 100% |  |  |  |  |  | Todos; Líder de proyecto; Analista; Diseñador BD; Diseñador Grafico; Documentador; Gerente de proyecto; Programador; Tester | 72h | 72h | 9,454 | 9,454 |
| 5 | 1.1.3 | Análisis del problema | 2d | 2020-05-15 A | 2020-05-18 A | 4 | 100% |  |  |  |  |  | Analista [33.3%]; Computadoras [4 Equipos por día]; Líder de proyecto [33.3%]; Documentador [33.3%]; Gerente de proyecto | 16h | 16h | 2,618.56 | 2,618.56 |
| 6 | 1.1.4 | Recopilar información | 2d | 2020-05-19 A | 2020-05-20 A | 5 | 100% |  |  |  |  |  | Líder de proyecto | 16h | 16h | 3,071.36 | 3,071.36 |
| 7 | 1.1.5 | Contrato de servicios a prestar | 2d | 2020-01-20 A | 2020-05-21 | 6 | 50% | 1d |  | 57d |  |  | Líder de proyecto; Analista; Impresora [1 día de uso]; Papeleria [2 día de uso]; Tinta [2 día de uso] | 24h | 16h | 4,460.64 | 2,924.96 |
| 8 | 1.1.6 | Identificación de requerimientos | 3d | 2020-05-19 A | 2020-05-21 A | 5 | 100% |  |  |  |  |  | Analista; Computadoras [1 Equipos por día]; internet [1 dia de uso]; Luz electrica [1 Horas de uso] | 24h | 24h | 3,827.8 | 3,827.8 |
| 9 | 1.1.7 | Identificación de restricciones de la base de datos a desarrollar | 3d | 2020-05-19 A | 2020-05-21 A | 5 | 100% |  |  |  |  |  | Diseñador BD; Programador | 48h | 48h | 5,892.96 | 5,892.96 |
| 10 | 1.1.8 | Análisis de los requerimientos | 2d | 2020-05-20 A | 2020-05-21 A | 8 | 100% |  |  |  |  |  | Analista; Documentador | 32h | 32h | 4,184.32 | 4,184.32 |
| 11 | 1.1.9 | Representación de los requerimientos | 2d | 2020-05-25 | 2020-05-26 |  |  |  |  | 0d |  | start no earlier than 2020-05-25 | Analista; Documentador | 32h |  | 4,184.32 |  |
| 12 | 1.1.10 | Validación de requerimientos | 1d | 2020-05-26 | 2020-05-26 |  |  |  |  | 0d |  | start no earlier than 2020-05-26 | Líder de proyecto; Analista | 16h |  | 2,734.96 |  |
| 13 | 1.1.11 | Generación del SRS | 1d | 2020-05-27 | 2020-05-27 | 12, 11 |  |  |  | 0d |  |  | Diseñador Grafico; Líder de proyecto | 16h |  | 2,607.12 |  |
| 14 | 1.1.12 | Firma del SRS | 1d | 2020-05-28 | 2020-05-28 | 13 |  |  |  | 0d |  |  | Usuario Final; Líder de proyecto; Impresora [1 día de uso]; Luz electrica [1 Horas de uso]; Tinta [1 día de uso]; Gerente de proyecto | 20h |  | 2,494.05 |  |
| 15 | 1.2 | **Diseño funcional** | 7d | 2020-05-29 A | 2020-06-08 |  |  | 7d |  |  |  |  |  | 184h |  | 28,959.84 |  |
| 16 | 1.2.1 | Definir el funcionamiento del producto | 1d | 2020-05-29 | 2020-05-29 | 14 |  |  |  | 0d |  |  | Analista; Líder de proyecto; Computadoras [1 Equipos por día]; Documentador | 24h |  | 3,827.84 |  |
| 17 | 1.2.2 | Definir las tablas del producto | 3d | 2020-06-01 | 2020-06-03 | 11, 16 |  |  |  | 0d |  |  | Líder de proyecto; Computadoras [1 Equipos por día]; Diseñador BD | 48h |  | 7,485.68 |  |
| 18 | 1.2.3 | Definir objetivo general | 2d | 2020-06-03 A | 2020-06-05 | 11, 17 |  | 2d |  | 0d |  |  | Analista; Líder de proyecto; Computadoras [1 Equipos por día]; Documentador; Gerente de proyecto | 48h |  | 7,455.68 |  |
| 19 | 1.2.4 | Definir objetivos especificos y metodologicos | 2d | 2020-06-04 | 2020-06-05 | 11, 17 |  |  |  | 0d |  |  | Analista; Líder de proyecto; Computadoras [1 Equipos por día]; Documentador | 48h |  | 7,455.68 |  |
| 20 | 1.2.5 | Definir alcance | 1d | 2020-06-05 A | 2020-06-08 | 18, 19 |  | 1d |  | 45d |  |  | Líder de proyecto; Analista; Gerente de proyecto | 16h |  | 2,734.96 |  |
| 21 | 1.3 | **Diseño técnico** | 16d | 2020-06-04 | 2020-06-25 |  |  |  |  |  |  |  |  | 216h |  | 28,076.8 |  |
| 22 | 1.3.1 | Diseño de diagramas de clases | 4d | 2020-06-04 | 2020-06-09 | 17 |  |  |  | 44d |  |  | Computadoras [1 Equipos por día]; Diseñador BD; Luz electrica [32 Horas de uso] | 32h |  | 3,784.85 |  |
| 23 | 1.3.2 | Generar el diagrama E-R | 2d | 2020-06-08 | 2020-06-09 | 17, 18 |  |  |  | 0d |  |  | Computadoras [2 Equipos por día]; Diseñador BD; Documentador; Luz electrica [16 Horas de uso] | 32h |  | 3,784.85 |  |
| 24 | 1.3.3 | Validar el diagrama E-R | 2d | 2020-06-08 | 2020-06-09 | 17, 18 |  |  |  | 0d |  |  | Computadoras [2 Equipos por día]; Diseñador BD; Documentador; Luz electrica [16 Horas de uso] | 32h |  | 3,784.85 |  |
| 25 | 1.3.4 | Transformar al diagrama relacional | 3d | 2020-06-10 | 2020-06-12 | 23, 24 |  |  |  | 0d |  |  | Computadoras [1 Equipos por día]; Diseñador BD; Luz electrica [24 Horas de uso] | 24h |  | 2,891.97 |  |
| 26 | 1.3.5 | Normalización de la base de datos | 3d | 2020-06-15 | 2020-06-17 | 25 |  |  |  | 0d |  |  | Computadoras [1 Equipos por día]; Diseñador BD; Luz electrica [16 Horas de uso] | 24h |  | 2,891.97 |  |
| 27 | 1.3.6 | Codificar la base de datos | 2d | 2020-06-18 | 2020-06-19 | 26 |  |  |  | 0d |  |  | Programador; Diseñador BD; Computadoras [2 Equipos por día]; Luz electrica [1 Horas de uso]; Agua [1 Dia de uso]; internet [1 dia de uso] | 32h |  | 4,164.9 |  |
| 28 | 1.3.7 | Validar entradas de datos | 3d | 2020-06-22 | 2020-06-24 | 27 |  |  |  | 32d | 0d |  | Programador; Computadoras [1 Equipos por día]; Luz electrica [24 Horas de uso] | 24h |  | 3,427.65 |  |
| 29 | 1.3.8 | Firma del SDS | 1d | 2020-06-25 | 2020-06-25 | 28 |  |  |  | 32d |  |  | Líder de proyecto; Papeleria [1 día de uso]; Gerente de proyecto | 16h |  | 3,345.76 |  |

| ID | WBS | Task | Duration | Start | Finish | Predecessors | Remaining | Total slack | Free slack | Constraint | Resources | Work | Cost | Actual cost |
| --- | --- | --- | --- | --- | --- | --- | --- | --- | --- | --- | --- | --- | --- | --- |
| 30 | 1.4 | **Código** | 24d | 2020-06-22 A | 2020-07-23 |  | 24d |  |  |  |  | 408h | 54,028.35 | 236.26 |
| 31 | 1.4.1 | Programar la tabla de Alumnos,Solbeca, becas y autbec | 3d | 2020-06-22 | 2020-06-24 | 27 |  | 0d |  |  | Programador; Computadoras [1 Equipos por día]; Luz electrica [32 Horas de uso]; Agua [3 Dia de uso]; internet [3 dia de uso] | 24h | 3,450.58 |  |
| 32 | 1.4.2 | Documentar código de Alumnos,Solbeca, becas y autbec | 2d | 2020-06-25 | 2020-06-26 | 31 |  | 30d | 0d |  | Documentador; Computadoras [1 Equipos por día]; Luz electrica [16 Horas de uso]; Agua [2 Dia de uso] | 16h | 2,005.39 |  |
| 33 | 1.4.3 | Pruebas unitarias | 1d | 2020-06-29 | 2020-06-29 | 32 |  | 30d |  |  | Pruebas de interface; Computadoras [1 Equipos por día]; Luz electrica [8 Horas de uso]; Tester | 16h | 2,186.53 |  |
| 34 | 1.4.4 | Programar la tabla de Grupos, aulas, pagos | 4d | 2020-06-25 | 2020-06-30 | 31 |  | 0d |  |  | Programador; Computadoras [1 Equipos por día]; Luz electrica [32 Horas de uso]; Agua [1 Dia de uso] | 32h | 4,505.39 |  |
| 35 | 1.4.5 | Documentar código de Grupos, aulas, pagos | 2d | 2020-07-01 | 2020-07-02 | 34 |  | 25d | 0d |  | Documentador; Computadoras [0.25 Equipos por día]; Luz electrica [16 Horas de uso]; Agua [2 Dia de uso] | 16h | 2,005.39 |  |
| 36 | 1.4.6 | Pruebas unitarias | 2d | 2020-07-03 | 2020-07-06 | 35 |  | 25d |  |  | Pruebas de interface; Computadoras [1 Equipos por día]; Luz electrica [8 Horas de uso]; Agua [1 Dia de uso]; Tester | 32h | 4,166.03 |  |
| 37 | 1.4.7 | Programar la tabla de Cursos, inscritos, telefono, tipotel | 4d | 2020-07-01 | 2020-07-06 | 34, 31 |  | 0d |  |  | Programador; Computadoras [1 Equipos por día]; Luz electrica [32 Horas de uso]; internet [1 dia de uso]; Agua [1 Dia de uso] | 32h | 4,522.02 |  |
| 38 | 1.4.8 | Documentar código de de Cursos, inscritos, telefono, tipotel | 2d | 2020-07-07 | 2020-07-08 | 37 |  | 0d |  |  | Documentador; Computadoras [1 Equipos por día]; Luz electrica [16 Horas de uso]; internet [1 dia de uso]; Agua [1 Dia de uso] | 16h | 2,022.02 |  |
| 39 | 1.4.9 | Pruebas unitarias | 2d | 2020-07-09 | 2020-07-10 | 38 |  | 0d |  |  | Pruebas de interface; Computadoras [2 Equipos por día]; Luz electrica [16 Horas de uso]; Tester | 32h | 4,159.73 |  |
| 40 | 1.4.10 | Programar la tabla de Instructores, especialidad | 2d | 2020-07-13 | 2020-07-14 | 39 |  | 0d |  |  | Programador; Computadoras [1 Equipos por día]; Luz electrica [16 Horas de uso] | 16h | 2,356.21 |  |
| 41 | 1.4.11 | Documentar códido de instructores y especialidad | 1d | 2020-07-15 | 2020-07-15 | 40 |  | 16d | 0d |  | Documentador; Computadoras [1 Equipos por día]; Luz electrica [8 Horas de uso]; internet [1 dia de uso] | 8h | 1,122.84 |  |
| 42 | 1.4.12 | Pruebas unitarias | 2d | 2020-07-16 | 2020-07-17 | 41 |  | 16d |  |  | Pruebas de interface; Computadoras [1 Equipos por día]; Luz electrica [16 Horas de uso]; internet [2 dia de uso]; Agua [2 Dia de uso] | 16h | 2,022.02 |  |
| 43 | 1.4.13 | Programar la tabla de Horarios, tipo | 3d | 2020-07-15 | 2020-07-17 | 40 |  | 0d |  |  | Programador; Computadoras [1 Equipos por día]; Luz electrica [24 Horas de uso]; internet [3 dia de uso] | 24h | 3,444.28 |  |
| 44 | 1.4.14 | Documentar código de Horarios, tipo | 2d | 2020-07-20 | 2020-07-21 | 43 |  | 14d |  |  | Documentador; Computadoras [1 Equipos por día]; Luz electrica [16 Horas de uso]; internet [2 dia de uso] | 16h | 2,015.72 |  |
| 45 | 1.4.15 | Pruebas unitarias | 2d | 2020-07-20 A | 2020-07-21 | 43 | 2d | 14d |  |  | Pruebas de interface; Programador; Computadoras [2 Equipos por día]; Luz electrica [8 Horas de uso]; internet [1 dia de uso]; Agua [1 Dia de uso] | 16h | 2,022.02 | 236.26 |
| 46 | 1.4.16 | Validación contra diseño, agregación de los usuarios y funcionalidad | 3d | 2020-07-21 | 2020-07-23 | 31, 34, 37, 40, 43 |  | 0d |  | start no earlier than 2020-07-21 | Diseñador BD; Programador; Diseñador Grafico; Documentador; Computadoras [4 Equipos por día]; Luz electrica [24 Horas de uso]; internet [3 dia de uso]; Agua [3 Dia de uso] | 96h | 12,022.18 |  |
| 47 | 1.5 | **Pruebas** | 8d | 2020-07-23 | 2020-08-03 |  |  |  |  |  |  | 256h | 40,121.52 |  |
| 48 | 1.5.1 | Subir módulos a servidor de pruebas | 1d | 2020-07-23 | 2020-07-23 |  |  | 12d |  | start no earlier than 2020-07-23 | Líder de proyecto; Programador; Documentador; SQA; Computadoras [3 Equipos por día]; Luz electrica [8 Horas de uso]; internet [1 dia de uso]; Agua [1 Dia de uso] | 32h | 5,343.38 |  |
| 49 | 1.5.2 | Pruebas de integración de software | 4d | 2020-07-24 | 2020-07-29 | 46 |  | 0d |  |  | Pruebas de interface; SQA; Programador; Computadoras [3 Equipos por día]; Luz electrica [24 Horas de uso]; Agua [1 Dia de uso]; internet [1 dia de uso]; Tester | 128h | 18,843.3 |  |
| 50 | 1.5.3 | Pruebas de aceptación | 3d | 2020-07-30 | 2020-08-03 | 49 |  | 0d |  |  | Líder de proyecto; Analista; Documentador; SQA; Computadoras [2 Equipos por día]; Luz electrica [10 Horas de uso]; internet [2 dia de uso] | 96h | 15,934.84 |  |
| 51 | 1.6 | **Implementación** | 5d | 2020-08-04 | 2020-08-10 |  |  |  |  |  |  | 404h | 60,157.32 |  |
| 52 | 1.6.1 | Subir software a sistema a servidor de pruebas | 2d | 2020-08-04 | 2020-08-05 | 50 |  | 3d |  |  | Líder de proyecto; Programador; Diseñador BD; SQA; Computadoras [3 Equipos por día]; Luz electrica [16 Horas de uso]; internet [1 dia de uso] | 28h | 5,087.04 |  |
| 53 | 1.6.2 | Pruebas de estrés | 4d | 2020-08-04 | 2020-08-07 | 50 |  | 1d |  | start no earlier than 2020-03-31 | Pruebas de interface; Psicólogo; Líder de proyecto; Computadoras [1 Equipos por día]; Luz electrica [32 Horas de uso]; internet [3 dia de uso] | 96h | 15,658.44 |  |
| 54 | 1.6.3 | Pruebas de aceptación | 5d | 2020-08-04 | 2020-08-10 | 50 |  | 0d |  |  | Usuario Final; Líder de proyecto; Gerente de proyecto | 120h | 16,228.8 |  |
| 55 | 1.6.4 | Implementar software a servidor en línea | 5d | 2020-08-04 | 2020-08-10 | 50 |  | 0d |  | start no earlier than 2020-03-30 | Usuario Final [80%]; Líder de proyecto [80%]; SQA [80%]; Documentador [80%]; Computadoras [2 Equipos por día]; Gerente de proyecto [80%] | 160h | 23,183.04 |  |
